# 软件开发

Schedule from MS Project, 2016-11-01 to 2017-01-23.

## Calendars

- 标准: Mon-Fri 08:00-12:00, 13:00-17:00; Sat-Sun off. Exceptions (off unless hours are given): 2016-12-17 08:00-12:00, 13:00-17:00, 2017-01-01 08:00-12:00, 13:00-17:00.

## Resources

| Resource |
| --- |
| 管理人员 |
| 项目经理 |
| 分析人员 |
| 开发人员 |
| 测试人员 |
| 培训人员 |
| 技术联络人员 |
| 部署小组 |

## Schedule

| ID | WBS | Task | Type | Duration | Start | Finish | Predecessors | Total slack | Free slack | Constraint | Resources | Work |
| --- | --- | --- | --- | --- | --- | --- | --- | --- | --- | --- | --- | --- |
| 1 | 1 | **项目范围规划** |  | 3.5d | 2016-11-01 | 2016-11-04 |  | 17.25d |  |  |  | 28h |
| 2 | 1.1 | 确定项目范围 |  | 4h | 2016-11-01 | 2016-11-01 |  | 19.25d | 0d | start no earlier than 2016-11-01 | 管理人员 | 4h |
| 3 | 1.2 | 获得项目所需资金 |  | 1d | 2016-11-01 | 2016-11-02 | 2 | 19.25d | 0d |  | 管理人员 | 8h |
| 4 | 1.3 | 定义预备资源 |  | 1d | 2016-11-02 | 2016-11-03 | 3 | 19.25d | 0d |  | 项目经理 | 8h |
| 5 | 1.4 | 获得核心资源 |  | 1d | 2016-11-03 | 2016-11-04 | 4 | 19.25d | 0d |  | 项目经理 | 8h |
| 6 | 1.5 | 项目范围规划完成 | milestone | 0d | 2016-11-04 | 2016-11-04 | 5 | 19.25d | 0d |  |  |  |
| 7 | 2 | **分析/软件需求** |  | 7d | 2016-11-04 | 2016-11-15 |  | 17.25d |  |  |  | 64h |
| 8 | 2.1 | 行为需求分析 |  | 1d | 2016-11-04 | 2016-11-07 | 6 | 19.25d | 0d |  | 分析人员 | 8h |
| 9 | 2.2 | 起草初步的软件规范 |  | 1d | 2016-11-07 | 2016-11-08 | 8 | 19.25d | 0d |  | 分析人员 | 8h |
| 10 | 2.3 | 制定初步预算 |  | 1d | 2016-11-08 | 2016-11-09 | 9 | 19.25d | 0d |  | 项目经理 | 8h |
| 11 | 2.4 | 工作组共同审阅软件规范/预算 |  | 4h | 2016-11-09 | 2016-11-09 | 10 | 19.25d | 0d |  | 项目经理; 分析人员 | 8h |
| 12 | 2.5 | 根据反馈修改软件规范 |  | 1d | 2016-11-10 | 2016-11-10 | 11 | 19.25d | 0d |  | 分析人员 | 8h |
| 13 | 2.6 | 确定交付期限 |  | 1d | 2016-11-11 | 2016-11-11 | 12 | 19.25d | 0d |  | 项目经理 | 8h |
| 14 | 2.7 | 获得开展后续工作的批准(概念、期限和预算) |  | 4h | 2016-11-14 | 2016-11-14 | 13 | 19.25d | 0d |  | 管理人员; 项目经理 | 8h |
| 15 | 2.8 | 获得所需资源 |  | 1d | 2016-11-14 | 2016-11-15 | 14 | 19.25d | 0d |  | 项目经理 | 8h |
| 16 | 2.9 | 分析工作完成 | milestone | 0d | 2016-11-15 | 2016-11-15 | 15 | 19.25d | 0d |  |  |  |
| 17 | 3 | **设计** |  | 5.5d | 2016-11-15 | 2016-11-22 |  | 17.25d |  |  |  | 48h |
| 18 | 3.1 | 审阅初步的软件规范 |  | 1d | 2016-11-15 | 2016-11-16 | 16 | 19.25d | 0d |  | 分析人员 | 8h |
| 19 | 3.2 | 制定功能规范 |  | 1d | 2016-11-16 | 2016-11-17 | 18 | 19.25d | 0d |  | 分析人员 | 8h |
| 20 | 3.3 | 根据功能规范开发原型 |  | 1d | 2016-11-17 | 2016-11-18 | 19 | 19.25d | 0d |  | 分析人员 | 8h |
| 21 | 3.4 | 审阅功能规范 |  | 1d | 2016-11-18 | 2016-11-21 | 20 | 19.25d | 0d |  | 管理人员 | 8h |
| 22 | 3.5 | 根据反馈修改功能规范 |  | 1d | 2016-11-21 | 2016-11-22 | 21 | 19.25d | 0d |  | 管理人员 | 8h |
| 23 | 3.6 | 获得开展后续工作的批准 |  | 4h | 2016-11-22 | 2016-11-22 | 22 | 19.25d | 0d |  | 管理人员; 项目经理 | 8h |
| 24 | 3.7 | 设计工作完成 | milestone | 0d | 2016-11-22 | 2016-11-22 | 23 | 19.25d | 0d |  |  |  |

| ID | WBS | Task | Type | Duration | Start | Finish | Predecessors | Total slack | Free slack | Constraint | Resources | Work |
| --- | --- | --- | --- | --- | --- | --- | --- | --- | --- | --- | --- | --- |
| 25 | 4 | **开发** |  | 27d | 2016-11-23 | 2016-12-28 |  | 16.25d |  |  |  | 248h |
| 26 | 4.1 | 审阅功能规范 |  | 1d | 2016-11-23 | 2016-11-23 | 24 | 19.25d | 0d |  | 开发人员 | 8h |
| 27 | 4.2 | 确定模块化/分层设计参数 |  | 1d | 2016-11-24 | 2016-11-24 | 26 | 19.25d | 0d |  | 开发人员 | 8h |
| 28 | 4.3 | 分派任务给开发人员 |  | 1d | 2016-11-25 | 2016-11-25 | 27 | 19.25d | 0d |  | 开发人员 | 8h |
| 29 | 4.4 | 编写代码 |  | 23d | 2016-11-28 | 2016-12-27 | 28 | 19.25d | 0d |  | 开发人员 | 184h |
| 30 | 4.5 | 开发人员测试(初步调试) |  | 5d | 2016-12-05 | 2016-12-12 | 29FS-7.5% | 19.25d | 13.25d |  | 开发人员 | 40h |
| 31 | 4.6 | 开发工作完毕 | milestone | 0d | 2016-12-28 | 2016-12-28 | 30 | 6d | 0d | finish no earlier than 2016-12-28 |  |  |
| 32 | 5 | **测试** |  | 42d | 2016-11-23 | 2017-01-17 |  | 4d |  |  |  | 280h |
| 33 | 5.1 | 根据产品规范制定单元测试计划 |  | 4d | 2016-11-23 | 2016-11-28 | 24 | 29d | 23d |  | 测试人员 | 32h |
| 34 | 5.2 | 根据产品规范制定整体测试计划 |  | 4d | 2016-11-23 | 2016-11-28 | 24 | 44d |  |  | 测试人员 | 32h |
| 35 | 5.3 | **单元测试** |  | 15d | 2016-12-29 | 2017-01-17 |  | 4d |  |  |  | 120h |
| 36 | 5.3.1 | 审阅模块化代码 |  | 5d | 2016-12-29 | 2017-01-03 | 33, 31 | 6d | 0d |  | 测试人员 | 40h |
| 37 | 5.3.2 | 测试组件模块是否符合产品规范 |  | 2d | 2017-01-04 | 2017-01-05 | 31, 36 | 6d | 0d |  | 测试人员 | 16h |
| 38 | 5.3.3 | 找出不符合产品规范的异常情况 |  | 3d | 2017-01-06 | 2017-01-10 | 37 | 6d | 0d |  | 测试人员 | 24h |
| 39 | 5.3.4 | 修改代码 |  | 3d | 2017-01-11 | 2017-01-13 | 38 | 6d | 0d |  | 测试人员 | 24h |
| 40 | 5.3.5 | 重新测试经过修改的代码 |  | 2d | 2017-01-16 | 2017-01-17 | 39 | 6d | 0d |  | 测试人员 | 16h |
| 41 | 5.3.6 | 单元测试完成 | milestone | 0d | 2017-01-17 | 2017-01-17 | 40 | 6d |  |  |  |  |
| 42 | 5.4 | **整体测试** |  | 12d | 2017-01-01 | 2017-01-16 |  |  |  |  |  | 96h |
| 43 | 5.4.1 | 测试模块集成情况 |  | 5d | 2017-01-01 | 2017-01-05 |  | 7d | 0d | start no earlier than 2017-01-01 | 测试人员 | 40h |
| 44 | 5.4.2 | 找出不符合规范的异常情况 |  | 2d | 2017-01-06 | 2017-01-09 | 43 | 7d | 0d |  | 测试人员 | 16h |
| 45 | 5.4.3 | 修改代码 |  | 3d | 2017-01-10 | 2017-01-12 | 44 | 7d | 0d |  | 测试人员 | 24h |
| 46 | 5.4.4 | 重新测试经过修改的代码 |  | 2d | 2017-01-13 | 2017-01-16 | 45 | 7d | 0d |  | 测试人员 | 16h |
| 47 | 5.4.5 | 整体测试完成 | milestone | 0d | 2017-01-16 | 2017-01-16 | 46 | 7d |  |  |  |  |
| 48 | 6 | **文档说明书建立** |  | 18d | 2016-12-28 | 2017-01-19 |  |  |  |  |  | 112h |
| 49 | 6.1 | 试用软件 |  | 1d | 2017-01-01 | 2017-01-01 |  | 18d |  | start no earlier than 2017-01-01 | 技术联络人员 | 8h |
| 50 | 6.2 | 编写文档说明书 |  | 5d | 2016-12-28 | 2017-01-02 |  | 15d | 0d |  | 技术联络人员 | 40h |
| 51 | 6.3 | 根据反馈修改“帮助”文档说明书 |  | 2d | 2017-01-03 | 2017-01-04 | 50 | 15d | 11d |  | 技术联络人员 | 16h |
| 52 | 6.4 | 在爱盲之家等网站发布文档说明书 |  | 1d | 2017-01-16 | 2017-01-16 | 24 | 4d | 0d | start no earlier than 2017-01-16 | 技术联络人员 | 8h |
| 53 | 6.5 | 编写评论（至少四十个），注册豌豆荚，腾讯应用宝，360手机助手等账号。 |  | 3d | 2017-01-17 | 2017-01-19 | 52 | 4d |  |  | 技术联络人员 | 24h |
| 54 | 6.6 | 将评论发布到注册的账号下，以及我们下载的软件下 |  | 2d | 2017-01-18 | 2017-01-19 |  | 4d | 0d | start no earlier than 2017-01-18 | 技术联络人员 | 16h |
| 55 | 6.7 | 完成 | milestone | 0d | 2017-01-19 | 2017-01-19 | 54, 51 | 4d |  |  |  |  |

| ID | WBS | Task | Type | Duration | Start | Finish | Predecessors | Total slack | Free slack | Constraint | Resources | Work |
| --- | --- | --- | --- | --- | --- | --- | --- | --- | --- | --- | --- | --- |
| 56 | 7 | **部署** |  | 49d | 2016-11-17 | 2017-01-20 |  | 1d |  |  |  | 72h |
| 57 | 7.1 | 确定最终部署策略 |  | 1d | 2016-11-17 | 2016-11-17 |  | 48d | 0d |  | 部署小组 | 8h |
| 58 | 7.2 | 确定部署方法 |  | 1d | 2016-11-18 | 2016-11-18 | 57 | 48d | 0d |  | 部署小组 | 8h |
| 59 | 7.3 | 获得部署所需资源 |  | 1d | 2016-11-21 | 2016-11-21 | 58 | 48d | 0d |  | 部署小组 | 8h |
| 60 | 7.4 | 培训技术支持人员 |  | 1d | 2016-11-22 | 2016-11-22 | 59 | 48d |  |  | 部署小组 | 8h |
| 61 | 7.5 | 部署软件 |  | 5d | 2017-01-16 | 2017-01-20 |  | 1d | 0d | start no earlier than 2017-01-15 | 部署小组 | 40h |
| 62 | 7.6 | 部署工作完成 | milestone | 0d | 2017-01-20 | 2017-01-20 | 61 | 1d |  |  |  |  |
| 63 | 8 | **实施工作结束后的回顾** |  | 2d | 2017-01-20 | 2017-01-23 |  |  |  |  |  | 16h |
| 64 | 8.1 | 将经验教训记录存档 |  | 2d | 2017-01-20 | 2017-01-23 |  | 0d |  | finish no earlier than 2017-01-23 | 项目经理 | 16h |
| 65 | 8.2 | 回顾完成 |  | 2d | 2017-01-20 | 2017-01-23 |  | 0d |  | finish no earlier than 2017-01-23 |  |  |
| 66 | 9 | 软件开发模板结束 | milestone | 0d | 2017-01-23 | 2017-01-23 | 65 | 0d |  |  |  |  |
